# Gantt EPSA

Schedule from GanttProject, 2019-04-03 to 2020-06-24, baseline: 15_05_2019.
EPSA

## Calendars

- Project calendar: Mon-Fri working; Sat-Sun off.

## Resources

| Resource |
| --- |
| MJT |
| ARZ |
| TLS |
| PTN |
| CMI |
| TMN |
| PTS |
| ASE |
| IGH |
| EBA |
| GLD |
| CAD |
| MKI |
| MSO |
| PAX |
| ADT |
| VDA |
| PCK |
| CLS |
| RMN |
| BMA |

## Schedule

| ID | WBS | Task | Type | Duration | Start | Finish | Predecessors | Complete | Baseline start | Baseline finish | Baseline duration | Resources |
| --- | --- | --- | --- | --- | --- | --- | --- | --- | --- | --- | --- | --- |
| 1 | 1 | **Tops** |  | 320d | 2019-04-03 | 2020-06-23 |  |  | 2019-04-03 | 2020-06-23 | 320d |  |
| 2 | 1.1 | Top Projet | milestone | 0d | 2019-04-03 | 2019-04-03 |  |  | 2019-04-03 | 2019-04-03 | 0d |  |
| 3 | 1.2 | RVP2 | milestone | 0d | 2019-04-03 | 2019-04-03 |  |  | 2019-04-03 | 2019-04-03 | 0d |  |
| 4 | 1.3 | Roll Out | milestone | 0d | 2019-04-10 | 2019-04-10 |  |  | 2019-04-10 | 2019-04-10 | 0d |  |
| 5 | 1.4 | Top Prédim | milestone | 0d | 2019-06-12 | 2019-06-12 |  |  | 2019-06-12 | 2019-06-12 | 0d |  |
| 6 | 1.5 | Top Appro | milestone | 0d | 2019-06-27 | 2019-06-27 |  |  | 2019-06-27 | 2019-06-27 | 0d |  |
| 7 | 1.6 | Top Saison | milestone | 0d | 2019-09-30 | 2019-09-30 |  |  | 2019-09-30 | 2019-09-30 | 0d |  |
| 8 | 1.7 | Top Maquette | milestone | 0d | 2019-05-01 | 2019-05-01 |  |  | 2019-05-01 | 2019-05-01 | 0d |  |
| 9 | 1.8 | Top Synthèse | milestone | 0d | 2019-10-02 | 2019-10-02 |  |  | 2019-10-02 | 2019-10-02 | 0d |  |
| 10 | 1.9 | Top Copeau 1 | milestone | 0d | 2019-11-06 | 2019-11-06 |  |  | 2019-11-06 | 2019-11-06 | 0d |  |
| 11 | 1.10 | Top Copeau 2 | milestone | 0d | 2019-11-20 | 2019-11-20 |  |  | 2019-11-20 | 2019-11-20 | 0d |  |
| 12 | 1.11 | Top Organe | milestone | 0d | 2020-02-05 | 2020-02-05 |  |  | 2020-02-05 | 2020-02-05 | 0d |  |
| 13 | 1.12 | Top Véhicule | milestone | 0d | 2020-02-19 | 2020-02-19 |  |  | 2020-02-19 | 2020-02-19 | 0d |  |
| 14 | 1.13 | Top Moteur | milestone | 0d | 2020-03-04 | 2020-03-04 |  |  | 2020-03-04 | 2020-03-04 | 0d |  |
| 15 | 1.14 | Top Qualif | milestone | 0d | 2020-03-17 | 2020-03-17 |  |  | 2020-03-17 | 2020-03-17 | 0d |  |
| 16 | 1.15 | Top Compet | milestone | 0d | 2020-06-24 | 2020-06-24 |  |  | 2020-06-24 | 2020-06-24 | 0d |  |
| 17 | 2 | **Livrables** |  | 22d | 2019-05-08 | 2019-06-06 |  | 32% | 2019-05-08 | 2019-06-04 | 20d |  |
| 18 | 2.1 | D2I |  | 5d | 2019-05-08 | 2019-05-14 |  | 100% | 2019-05-08 | 2019-05-14 | 5d |  |
| 19 | 2.2 | MSP |  | 5d | 2019-05-08 | 2019-05-14 |  | 63% | 2019-05-08 | 2019-05-14 | 5d |  |
| 20 | 2.3 | CdCF |  | 8d | 2019-05-15 | 2019-05-24 | 18, 19 | 87% | 2019-05-15 | 2019-05-21 | 5d |  |
| 21 | 2.4 | KPI |  | 8d | 2019-05-27 | 2019-06-05 | 20 |  | 2019-05-22 | 2019-05-28 | 5d |  |
| 22 | 2.5 | CCA |  | 8d | 2019-05-27 | 2019-06-05 | 20 |  | 2019-05-22 | 2019-05-28 | 5d |  |
| 23 | 2.6 | Rapport de PE |  | 12d | 2019-05-22 | 2019-06-06 |  |  |  |  |  |  |
| 24 | 3 | **Frame** |  | 43d | 2019-05-08 | 2019-07-05 |  | 26% | 2019-05-08 | 2019-05-22 | 11d |  |
| 25 | 3.1 | Finir BOM |  | 4d | 2019-05-08 | 2019-05-13 |  | 100% | 2019-05-08 | 2019-05-13 | 4d | CMI |
| 26 | 3.2 | Recontacter Tachon |  | 7d | 2019-05-08 | 2019-05-16 |  | 100% | 2019-05-08 | 2019-05-16 | 7d | CMI |
| 27 | 3.3 | Continuer test chassis surfacique |  | 33d | 2019-05-22 | 2019-07-05 |  | 20% |  |  |  |  |
| 28 | 3.4 | Cdcf des sous systèmes |  | 6d | 2019-05-22 | 2019-05-29 |  | 20% |  |  |  |  |
| 29 | 3.5 | KPI et CCA |  | 6d | 2019-05-30 | 2019-06-06 | 28 |  |  |  |  |  |
| 30 | 3.6 | MIP 3D Frame |  | 15d | 2019-06-07 | 2019-06-27 | 29 |  |  |  |  |  |

| ID | WBS | Task | Duration | Start | Finish | Predecessors | Complete | Baseline start | Baseline finish | Baseline duration | Resources |
| --- | --- | --- | --- | --- | --- | --- | --- | --- | --- | --- | --- |
| 31 | 4 | **Aéro** | 30d | 2019-05-08 | 2019-06-18 |  | 32% |  |  |  |  |
| 32 | 4.1 | **Réunion Aéro** | 16d | 2019-05-08 | 2019-05-29 |  | 75% | 2019-05-08 | 2019-05-22 | 11d |  |
| 33 | 4.1.1 | Organiser réunion Aéro 1 | 6d | 2019-05-08 | 2019-05-15 |  | 100% | 2019-05-08 | 2019-05-15 | 6d | TMN |
| 34 | 4.1.2 | Réunion Aéro 1 | 1d | 2019-05-16 | 2019-05-16 | 33 | 100% | 2019-05-16 | 2019-05-16 | 1d |  |
| 35 | 4.1.3 | Préparation simulation | 3d | 2019-05-08 | 2019-05-10 |  | 100% | 2019-05-08 | 2019-05-10 | 3d | TMN |
| 36 | 4.1.4 | Simulation | 4d | 2019-05-13 | 2019-05-16 | 35 | 50% | 2019-05-13 | 2019-05-16 | 4d | TMN |
| 37 | 4.1.5 | Calcul indicateurs + Demander Simu Accel/Slid | 1d | 2019-05-17 | 2019-05-17 | 36 |  | 2019-05-17 | 2019-05-17 | 1d |  |
| 38 | 4.1.6 | Réunion 2 EPSAéro ou pas | 1d | 2019-05-29 | 2019-05-29 | 37, 63, 64, 84 |  | 2019-05-22 | 2019-05-22 | 1d |  |
| 39 | 4.2 | **Gain de points** | 17d | 2019-05-16 | 2019-06-07 |  | 3% |  |  |  |  |
| 40 | 4.2.1 | Downforce | 1d | 2019-05-16 | 2019-05-16 |  | 100% |  |  |  |  |
| 41 | 4.2.2 | Masse | 17d | 2019-05-16 | 2019-06-07 |  |  |  |  |  |  |
| 42 | 4.2.3 | Centre de gravité | 12d | 2019-05-16 | 2019-05-31 |  |  |  |  |  | PTS |
| 43 | 4.3 | **Budget** | 23d | 2019-05-08 | 2019-06-07 |  | 37% |  |  |  |  |
| 44 | 4.3.1 | Relancer Devis | 5d | 2019-05-08 | 2019-05-14 |  | 100% | 2019-05-08 | 2019-05-08 | 1d |  |
| 45 | 4.3.2 | Devis | 18d | 2019-05-15 | 2019-06-07 | 44 | 20% |  |  |  |  |
| 46 | 4.4 | **Temps** | 20d | 2019-05-16 | 2019-06-12 |  | 16% |  |  |  |  |
| 47 | 4.4.1 | H.Homme | 2d | 2019-05-16 | 2019-05-17 |  | 100% |  |  |  |  |
| 48 | 4.4.2 | Fraction | 2d | 2019-05-20 | 2019-05-21 | 47 | 100% |  |  |  |  |
| 49 | 4.4.3 | Recrutement | 20d | 2019-05-16 | 2019-06-12 |  |  |  |  |  | MJT; ARZ; TLS |
| 50 | 4.5 | **Fallback plan** | 14d | 2019-05-16 | 2019-06-04 |  | 40% |  |  |  |  |
| 51 | 4.5.1 | Plans listés | 8d | 2019-05-16 | 2019-05-27 |  | 100% |  |  |  | TLS |
| 52 | 4.5.2 | Plans datés | 6d | 2019-05-28 | 2019-06-04 | 51 |  |  |  |  | ARZ |
| 53 | 4.5.3 | Perte si annulation | 6d | 2019-05-28 | 2019-06-04 | 51 |  |  |  |  | TLS |
| 54 | 4.6 | **Prototypage** | 15d | 2019-05-22 | 2019-06-11 |  | 75% |  |  |  |  |
| 55 | 4.6.1 | Réflexion | 5d | 2019-05-22 | 2019-05-28 |  | 100% |  |  |  | TMN |
| 56 | 4.6.2 | Nervure Bois | 10d | 2019-05-29 | 2019-06-11 | 55 | 100% |  |  |  | TMN |
| 57 | 4.6.3 | Toile cirée | 5d | 2019-05-29 | 2019-06-04 |  |  |  |  |  |  |

Notes:
- 35: TMN SkidPad / Agostino Accel
- 36: Il faut obtenir Cx et Cz
- 37: €/points / €/kg downforce
- 49: PAi/PAr

| ID | WBS | Task | Duration | Start | Finish | Predecessors | Complete | Baseline start | Baseline finish | Baseline duration | Resources |
| --- | --- | --- | --- | --- | --- | --- | --- | --- | --- | --- | --- |
| 58 | 4.7 | **Design du kit** | 20d | 2019-05-22 | 2019-06-18 |  |  |  |  |  |  |
| 59 | 4.7.1 | Simplifier l'aéro | 20d | 2019-05-22 | 2019-06-18 |  |  |  |  |  |  |
| 60 | 5 | **LAS** | 40d | 2019-05-08 | 2019-07-02 |  | 44% | 2019-05-08 | 2019-05-28 | 15d |  |
| 61 | 5.1 | **Pneu** | 20d | 2019-05-08 | 2019-06-04 |  | 43% | 2019-05-08 | 2019-05-28 | 15d |  |
| 62 | 5.1.1 | Modèle de pneu | 10d | 2019-05-08 | 2019-05-21 |  | 100% | 2019-05-08 | 2019-05-21 | 10d | MSO |
| 63 | 5.1.2 | Modèle accélération latérale | 5d | 2019-05-08 | 2019-05-14 |  | 100% | 2019-05-08 | 2019-05-14 | 5d | MKI |
| 64 | 5.1.3 | Modèle freinage | 10d | 2019-05-15 | 2019-05-28 |  | 20% | 2019-05-08 | 2019-05-14 | 5d | ADT |
| 65 | 5.1.4 | Modèle Circuit | 7d | 2019-05-22 | 2019-05-30 | 63, 83 | 50% |  |  |  |  |
| 66 | 5.1.5 | Analyse Point Performance | 5d | 2019-05-29 | 2019-06-04 | 64 |  |  |  |  |  |
| 67 | 5.1.6 | Analyse résultat | 5d | 2019-05-29 | 2019-06-04 | 64 |  |  |  |  |  |
| 68 | 5.1.7 | Matrice de décision | 5d | 2019-05-29 | 2019-06-04 | 62, 63, 64 |  | 2019-05-22 | 2019-05-28 | 5d | MKI; MSO |
| 69 | 5.2 | **Suspension** | 5d | 2019-05-27 | 2019-05-31 |  |  | 2019-05-22 | 2019-05-28 | 5d |  |
| 70 | 5.2.1 | Choix architecture | 5d | 2019-05-27 | 2019-05-31 | 20 |  | 2019-05-22 | 2019-05-28 | 5d | PAX |
| 71 | 5.3 | **BAR** | 5d | 2019-05-27 | 2019-05-31 |  |  | 2019-05-22 | 2019-05-28 | 5d |  |
| 72 | 5.3.1 | Choix architecture | 5d | 2019-05-27 | 2019-05-31 | 20 |  | 2019-05-22 | 2019-05-28 | 5d | VDA |
| 73 | 5.4 | **Roue équipée** | 5d | 2019-05-22 | 2019-05-28 |  |  |  |  |  |  |
| 74 | 5.4.1 | CdCF | 5d | 2019-05-22 | 2019-05-28 |  |  |  |  |  |  |
| 75 | 5.5 | **Optimum Kinematics** | 40d | 2019-05-08 | 2019-07-02 |  | 74% | 2019-05-08 | 2019-05-28 | 15d |  |
| 76 | 5.5.1 | Prise en main | 30d | 2019-05-08 | 2019-06-18 |  | 75% | 2019-05-08 | 2019-05-21 | 10d | PCK |
| 77 | 5.5.2 | Faire le CR | 40d | 2019-05-08 | 2019-07-02 |  | 74% | 2019-05-08 | 2019-05-28 | 15d | PCK |
| 78 | 5.6 | **Point de LAS** | 10d | 2019-05-29 | 2019-06-11 |  |  |  |  |  |  |
| 79 | 5.6.1 | Prise en main de LOTUS | 10d | 2019-05-29 | 2019-06-11 |  |  |  |  |  |  |
| 80 | 6 | **Motorisation** | 25d | 2019-05-06 | 2019-06-07 |  | 37% | 2019-05-06 | 2019-05-24 | 15d |  |
| 81 | 6.1 | **Modèle** | 13d | 2019-05-08 | 2019-05-24 |  | 96% | 2019-05-08 | 2019-05-21 | 10d |  |
| 82 | 6.1.1 | Optimum Lap | 10d | 2019-05-08 | 2019-05-21 |  | 100% | 2019-05-08 | 2019-05-21 | 10d | IGH |
| 83 | 6.1.2 | Modèle Accel | 10d | 2019-05-08 | 2019-05-21 |  | 100% | 2019-05-08 | 2019-05-14 | 5d | ASE |
| 84 | 6.1.3 | Simulation avec aéro | 3d | 2019-05-22 | 2019-05-24 | 36, 83 | 70% | 2019-05-17 | 2019-05-21 | 3d |  |

Notes:
- 62: Code / Donnée TTC
- 64: Choix aéro
- 65: Autocross puis endura / nce
- 82: Circuit FS ATA
- 83: Simuler le temps à l'accel avec la trainée simulée en configuration lisse

| ID | WBS | Task | Duration | Start | Finish | Predecessors | Complete | Baseline start | Baseline finish | Baseline duration | Resources |
| --- | --- | --- | --- | --- | --- | --- | --- | --- | --- | --- | --- |
| 85 | 6.2 | **Refroidissement** | 5d | 2019-06-03 | 2019-06-07 |  |  | 2019-05-20 | 2019-05-24 | 5d |  |
| 86 | 6.2.1 | Architecture à définir | 5d | 2019-06-03 | 2019-06-07 |  |  | 2019-05-20 | 2019-05-24 | 5d | ASE |
| 87 | 6.3 | **Admission** | 10d | 2019-05-27 | 2019-06-07 |  |  | 2019-05-08 | 2019-05-21 | 10d |  |
| 88 | 6.3.1 | Architecture à définir | 10d | 2019-05-27 | 2019-06-07 |  |  | 2019-05-08 | 2019-05-21 | 10d | TLS |
| 89 | 6.4 | **Echappement** | 10d | 2019-05-27 | 2019-06-07 |  |  |  |  |  |  |
| 90 | 6.4.1 | Architecture à définir | 10d | 2019-05-27 | 2019-06-07 |  |  |  |  |  | TLS |
| 91 | 6.5 | **Circuit d'essence** | 20d | 2019-05-06 | 2019-05-31 |  | 47% | 2019-05-06 | 2019-05-24 | 15d |  |
| 92 | 6.5.1 | Reflexion sur l'éthanol | 20d | 2019-05-06 | 2019-05-31 |  | 50% | 2019-05-06 | 2019-05-24 | 15d | CAD |
| 93 | 6.5.2 | Sytème de remplissage plus léger | 18d | 2019-05-08 | 2019-05-31 |  | 45% | 2019-05-08 | 2019-05-21 | 10d | EBA; GLD |
| 94 | 7 | **SEISM** | 114d | 2019-05-22 | 2019-10-28 |  | 33% | 2019-05-10 | 2019-05-16 | 5d |  |
| 95 | 7.1 | **Démarchage** | 23d | 2019-05-22 | 2019-06-21 |  | 58% | 2019-05-10 | 2019-05-16 | 5d |  |
| 96 | 7.1.1 | Caméra de casque | 7d | 2019-05-22 | 2019-05-30 |  | 100% | 2019-05-10 | 2019-05-16 | 5d | CLS |
| 97 | 7.1.2 | Relancer pour la caméra | 5d | 2019-06-17 | 2019-06-21 |  |  |  |  |  |  |
| 98 | 7.2 | **Faisceau** | 28d | 2019-05-22 | 2019-06-28 |  | 21% |  |  |  |  |
| 99 | 7.2.1 | CdCF | 8d | 2019-05-22 | 2019-05-31 |  | 100% |  |  |  |  |
| 100 | 7.2.2 | Architecture Faisceau | 5d | 2019-06-03 | 2019-06-07 | 99 |  |  |  |  | CLS |
| 101 | 7.2.3 | Faisceau HV | 5d | 2019-06-10 | 2019-06-14 | 100 |  |  |  |  | CLS |
| 102 | 7.2.4 | Batterie | 10d | 2019-06-17 | 2019-06-28 | 101 |  |  |  |  | CLS |
| 103 | 7.2.5 | Faisceau LV | 10d | 2019-06-10 | 2019-06-21 | 100 |  |  |  |  | CLS |
| 104 | 7.3 | **Tableau de bord** | 13d | 2019-05-22 | 2019-06-07 |  | 61% |  |  |  |  |
| 105 | 7.3.1 | CdCF | 8d | 2019-05-22 | 2019-05-31 |  | 100% |  |  |  |  |
| 106 | 7.3.2 | Architecture | 5d | 2019-06-03 | 2019-06-07 | 105 |  |  |  |  | RMN |
| 107 | 7.4 | **Passage de rapport** | 33d | 2019-05-22 | 2019-07-05 |  | 37% |  |  |  |  |
| 108 | 7.4.1 | CdCF | 8d | 2019-05-22 | 2019-05-31 |  | 100% |  |  |  |  |
| 109 | 7.4.2 | Contacter TDN | 3d | 2019-06-03 | 2019-06-05 | 108 | 100% |  |  |  |  |
| 110 | 7.4.3 | Architecture | 5d | 2019-06-03 | 2019-06-07 | 108 | 50% |  |  |  | BMA |
| 111 | 7.4.4 | Commande de boîte | 20d | 2019-06-10 | 2019-07-05 | 110 |  |  |  |  | BMA |

Notes:
- 86: A définir en fonction du choix aéro
- 88: faire attention à l'aéro
- 90: faire attention à l'aéro
- 106: TdB/Volant équipé
- 110: TdB/Volant équipé

| ID | WBS | Task | Duration | Start | Finish | Predecessors | Complete | Resources |
| --- | --- | --- | --- | --- | --- | --- | --- | --- |
| 112 | 7.5 | **Télémétrie** | 23d | 2019-05-22 | 2019-06-21 |  | 34% |  |
| 113 | 7.5.1 | CdCF | 8d | 2019-05-22 | 2019-05-31 |  | 100% |  |
| 114 | 7.5.2 | Architecture | 5d | 2019-06-03 | 2019-06-07 | 113 |  | CLS |
| 115 | 7.5.3 | Choix capteurs | 10d | 2019-06-10 | 2019-06-21 | 114 |  | CLS |
| 116 | 7.6 | **Communication pilote-stand** | 20d | 2019-10-01 | 2019-10-28 |  |  |  |
| 117 | 7.6.1 | Architecture | 20d | 2019-10-01 | 2019-10-28 |  |  |  |
