# Gantt EPSA

Schedule from GanttProject, 2019-04-03 to 2020-06-24, baseline: 15_05_2019.
EPSA

## Calendars

- Project calendar: Mon-Fri working; Sat-Sun off.

## Resources

| Resource |
| --- |
| MJT |
| ARZ |
| TLS |
| PTN |
| CMI |
| TMN |
| PTS |
| ASE |
| IGH |
| EBA |
| GLD |
| CAD |
| MKI |
| MSO |
| PAX |
| ADT |
| VDA |
| PCK |
| CLS |
| RMN |
| BMA |

## Schedule

| ID | WBS | Task | Type | Duration | Start | Finish | Predecessors | Complete | Baseline start | Baseline finish | Baseline duration | Resources |
| --- | --- | --- | --- | --- | --- | --- | --- | --- | --- | --- | --- | --- |
| 1 | 1 | **Tops** |  | 320d | 2019-04-03 | 2020-06-23 |  |  | 2019-04-03 | 2020-06-23 | 320d |  |
| 2 | 1.1 | Top Projet | milestone | 0d | 2019-04-03 | 2019-04-03 |  |  | 2019-04-03 | 2019-04-03 | 0d |  |
| 3 | 1.2 | RVP2 | milestone | 0d | 2019-04-03 | 2019-04-03 |  |  | 2019-04-03 | 2019-04-03 | 0d |  |
| 4 | 1.3 | Roll Out | milestone | 0d | 2019-04-10 | 2019-04-10 |  |  | 2019-04-10 | 2019-04-10 | 0d |  |
| 5 | 1.4 | Top Prédim | milestone | 0d | 2019-06-12 | 2019-06-12 |  |  | 2019-06-12 | 2019-06-12 | 0d |  |
| 6 | 1.5 | Top Appro | milestone | 0d | 2019-06-27 | 2019-06-27 |  |  | 2019-06-27 | 2019-06-27 | 0d |  |
| 7 | 1.6 | Top Saison | milestone | 0d | 2019-09-30 | 2019-09-30 |  |  | 2019-09-30 | 2019-09-30 | 0d |  |
| 8 | 1.7 | Top Maquette | milestone | 0d | 2019-05-01 | 2019-05-01 |  |  | 2019-05-01 | 2019-05-01 | 0d |  |
| 9 | 1.8 | Top Synthèse | milestone | 0d | 2019-10-02 | 2019-10-02 |  |  | 2019-10-02 | 2019-10-02 | 0d |  |
| 10 | 1.9 | Top Copeau 1 | milestone | 0d | 2019-11-06 | 2019-11-06 |  |  | 2019-11-06 | 2019-11-06 | 0d |  |
| 11 | 1.10 | Top Copeau 2 | milestone | 0d | 2019-11-20 | 2019-11-20 |  |  | 2019-11-20 | 2019-11-20 | 0d |  |
| 12 | 1.11 | Top Organe | milestone | 0d | 2020-02-05 | 2020-02-05 |  |  | 2020-02-05 | 2020-02-05 | 0d |  |
| 13 | 1.12 | Top Véhicule | milestone | 0d | 2020-02-19 | 2020-02-19 |  |  | 2020-02-19 | 2020-02-19 | 0d |  |
| 14 | 1.13 | Top Moteur | milestone | 0d | 2020-03-04 | 2020-03-04 |  |  | 2020-03-04 | 2020-03-04 | 0d |  |
| 15 | 1.14 | Top Qualif | milestone | 0d | 2020-03-17 | 2020-03-17 |  |  | 2020-03-17 | 2020-03-17 | 0d |  |
| 16 | 1.15 | Top Compet | milestone | 0d | 2020-06-24 | 2020-06-24 |  |  | 2020-06-24 | 2020-06-24 | 0d |  |
| 17 | 2 | **Livrables** |  | 22d | 2019-05-08 | 2019-06-06 |  | 32% | 2019-05-08 | 2019-06-04 | 20d |  |
| 18 | 2.1 | D2I |  | 5d | 2019-05-08 | 2019-05-14 |  | 100% | 2019-05-08 | 2019-05-14 | 5d |  |
| 19 | 2.2 | MSP |  | 5d | 2019-05-08 | 2019-05-14 |  | 63% | 2019-05-08 | 2019-05-14 | 5d |  |
| 20 | 2.3 | CdCF |  | 8d | 2019-05-15 | 2019-05-24 | 18, 19 | 87% | 2019-05-15 | 2019-05-21 | 5d |  |
| 21 | 2.4 | KPI |  | 8d | 2019-05-27 | 2019-06-05 | 20 |  | 2019-05-22 | 2019-05-28 | 5d |  |
| 22 | 2.5 | CCA |  | 8d | 2019-05-27 | 2019-06-05 | 20 |  | 2019-05-22 | 2019-05-28 | 5d |  |
| 23 | 2.6 | Rapport de PE |  | 12d | 2019-05-22 | 2019-06-06 |  |  |  |  |  |  |
| 24 | 3 | **Frame** |  | 43d | 2019-05-08 | 2019-07-05 |  | 47% | 2019-05-08 | 2019-05-22 | 11d |  |
| 25 | 3.1 | Finir BOM |  | 4d | 2019-05-08 | 2019-05-13 |  | 100% | 2019-05-08 | 2019-05-13 | 4d | CMI |
| 26 | 3.2 | Recontacter Tachon |  | 7d | 2019-05-08 | 2019-05-16 |  | 100% | 2019-05-08 | 2019-05-16 | 7d | CMI |
| 27 | 3.3 | Continuer test chassis surfacique |  | 33d | 2019-05-22 | 2019-07-05 |  | 20% |  |  |  |  |
| 28 | 3.4 | Cdcf des sous systèmes |  | 6d | 2019-05-22 | 2019-05-29 |  | 80% |  |  |  |  |
| 29 | 3.5 | KPI et CCA |  | 6d | 2019-05-30 | 2019-06-06 | 28 | 70% |  |  |  |  |

| ID | WBS | Task | Duration | Start | Finish | Predecessors | Complete | Baseline start | Baseline finish | Baseline duration | Resources |
| --- | --- | --- | --- | --- | --- | --- | --- | --- | --- | --- | --- |
| 30 | 4 | **Aéro** | 49d | 2019-05-08 | 2019-07-15 |  | 38% |  |  |  |  |
| 31 | 4.1 | **Réunion Aéro** | 49d | 2019-05-08 | 2019-07-15 |  | 75% | 2019-05-08 | 2019-05-22 | 11d |  |
| 32 | 4.1.1 | Organiser réunion Aéro 1 | 6d | 2019-05-08 | 2019-05-15 |  | 100% | 2019-05-08 | 2019-05-15 | 6d | TMN |
| 33 | 4.1.2 | Réunion Aéro 1 | 1d | 2019-05-16 | 2019-05-16 | 32 | 100% | 2019-05-16 | 2019-05-16 | 1d |  |
| 34 | 4.1.3 | Préparation simulation | 3d | 2019-05-08 | 2019-05-10 |  | 100% | 2019-05-08 | 2019-05-10 | 3d | TMN |
| 35 | 4.1.4 | Simulation | 4d | 2019-05-13 | 2019-05-16 | 34 | 50% | 2019-05-13 | 2019-05-16 | 4d | TMN |
| 36 | 4.1.5 | Calcul indicateurs + Demander Simu Accel/Slid | 1d | 2019-05-17 | 2019-05-17 | 35 |  | 2019-05-17 | 2019-05-17 | 1d |  |
| 37 | 4.1.6 | Réunion 2 EPSAéro ou pas | 1d | 2019-07-15 | 2019-07-15 | 36, 62, 63, 78 |  | 2019-05-22 | 2019-05-22 | 1d |  |
| 38 | 4.2 | **Gain de points** | 29d | 2019-05-16 | 2019-06-25 |  | 3% |  |  |  |  |
| 39 | 4.2.1 | Downforce | 1d | 2019-05-16 | 2019-05-16 |  | 100% |  |  |  |  |
| 40 | 4.2.2 | Masse | 15d | 2019-06-05 | 2019-06-25 |  |  |  |  |  |  |
| 41 | 4.2.3 | Centre de gravité | 10d | 2019-06-05 | 2019-06-18 |  |  |  |  |  | PTS |
| 42 | 4.3 | **Budget** | 23d | 2019-05-08 | 2019-06-07 |  | 37% |  |  |  |  |
| 43 | 4.3.1 | Relancer Devis | 5d | 2019-05-08 | 2019-05-14 |  | 100% | 2019-05-08 | 2019-05-08 | 1d |  |
| 44 | 4.3.2 | Devis | 18d | 2019-05-15 | 2019-06-07 | 43 | 20% |  |  |  |  |
| 45 | 4.4 | **Temps** | 20d | 2019-05-16 | 2019-06-12 |  | 16% |  |  |  |  |
| 46 | 4.4.1 | H.Homme | 2d | 2019-05-16 | 2019-05-17 |  | 100% |  |  |  |  |
| 47 | 4.4.2 | Fraction | 2d | 2019-05-20 | 2019-05-21 | 46 | 100% |  |  |  |  |
| 48 | 4.4.3 | Recrutement | 20d | 2019-05-16 | 2019-06-12 |  |  |  |  |  | MJT; ARZ; TLS |
| 49 | 4.5 | **Fallback plan** | 14d | 2019-05-16 | 2019-06-04 |  | 40% |  |  |  |  |
| 50 | 4.5.1 | Plans listés | 8d | 2019-05-16 | 2019-05-27 |  | 100% |  |  |  | TLS |
| 51 | 4.5.2 | Plans datés | 6d | 2019-05-28 | 2019-06-04 | 50 |  |  |  |  | ARZ |
| 52 | 4.5.3 | Perte si annulation | 6d | 2019-05-28 | 2019-06-04 | 50 |  |  |  |  | TLS |
| 53 | 4.6 | **Prototypage** | 15d | 2019-05-22 | 2019-06-11 |  | 75% |  |  |  |  |
| 54 | 4.6.1 | Réflexion | 5d | 2019-05-22 | 2019-05-28 |  | 100% |  |  |  | TMN |
| 55 | 4.6.2 | Nervure Bois | 10d | 2019-05-29 | 2019-06-11 | 54 | 100% |  |  |  | TMN |
| 56 | 4.6.3 | Toile cirée | 5d | 2019-05-29 | 2019-06-04 |  |  |  |  |  |  |

Notes:
- 34: TMN SkidPad / Agostino Accel
- 35: Il faut obtenir Cx et Cz
- 36: €/points / €/kg downforce
- 48: PAi/PAr

| ID | WBS | Task | Duration | Start | Finish | Predecessors | Complete | Baseline start | Baseline finish | Baseline duration | Resources |
| --- | --- | --- | --- | --- | --- | --- | --- | --- | --- | --- | --- |
| 57 | 4.7 | **Design du kit** | 20d | 2019-05-22 | 2019-06-18 |  |  |  |  |  |  |
| 58 | 4.7.1 | Simplifier l'aéro | 20d | 2019-05-22 | 2019-06-18 |  |  |  |  |  |  |
| 59 | 5 | **LAS** | 48d | 2019-05-08 | 2019-07-12 |  | 46% | 2019-05-08 | 2019-05-28 | 15d |  |
| 60 | 5.1 | **Pneu** | 48d | 2019-05-08 | 2019-07-12 |  | 43% | 2019-05-08 | 2019-05-28 | 15d |  |
| 61 | 5.1.1 | Modèle de pneu | 10d | 2019-05-08 | 2019-05-21 |  | 100% | 2019-05-08 | 2019-05-21 | 10d | MSO |
| 62 | 5.1.2 | Modèle accélération latérale | 5d | 2019-05-08 | 2019-05-14 |  | 100% | 2019-05-08 | 2019-05-14 | 5d | MKI |
| 63 | 5.1.3 | Modèle freinage | 10d | 2019-07-01 | 2019-07-12 |  | 20% | 2019-05-08 | 2019-05-14 | 5d | ADT |
| 64 | 5.1.4 | Modèle Circuit | 7d | 2019-05-22 | 2019-05-30 | 62, 77 | 50% |  |  |  |  |
| 65 | 5.1.5 | Analyse Point Performance | 5d | 2019-05-31 | 2019-06-06 | 64 |  |  |  |  |  |
| 66 | 5.1.6 | Analyse résultat | 5d | 2019-05-31 | 2019-06-06 | 64 |  |  |  |  |  |
| 67 | 5.1.7 | Matrice de décision | 5d | 2019-05-31 | 2019-06-06 | 61, 62, 64 |  | 2019-05-22 | 2019-05-28 | 5d | MKI; MSO |
| 68 | 5.2 | **Optimum Kinematics** | 30d | 2019-05-08 | 2019-06-18 |  | 68% | 2019-05-08 | 2019-05-28 | 15d |  |
| 69 | 5.2.1 | Prise en main | 25d | 2019-05-08 | 2019-06-11 |  | 75% | 2019-05-08 | 2019-05-21 | 10d | PCK |
| 70 | 5.2.2 | Faire le CR | 30d | 2019-05-08 | 2019-06-18 |  | 74% | 2019-05-08 | 2019-05-28 | 15d | PCK |
| 71 | 5.2.3 | Organiser le skype | 5d | 2019-06-05 | 2019-06-11 |  |  |  |  |  |  |
| 72 | 5.3 | **Point de LAS** | 10d | 2019-05-29 | 2019-06-11 |  |  |  |  |  |  |
| 73 | 5.3.1 | Prise en main de LOTUS | 10d | 2019-05-29 | 2019-06-11 |  |  |  |  |  |  |
| 74 | 6 | **Motorisation** | 25d | 2019-05-06 | 2019-06-07 |  | 37% | 2019-05-06 | 2019-05-24 | 15d |  |
| 75 | 6.1 | **Modèle** | 13d | 2019-05-08 | 2019-05-24 |  | 96% | 2019-05-08 | 2019-05-21 | 10d |  |
| 76 | 6.1.1 | Optimum Lap | 10d | 2019-05-08 | 2019-05-21 |  | 100% | 2019-05-08 | 2019-05-21 | 10d | IGH |
| 77 | 6.1.2 | Modèle Accel | 10d | 2019-05-08 | 2019-05-21 |  | 100% | 2019-05-08 | 2019-05-14 | 5d | ASE |
| 78 | 6.1.3 | Simulation avec aéro | 3d | 2019-05-22 | 2019-05-24 | 35, 77 | 70% | 2019-05-17 | 2019-05-21 | 3d |  |
| 79 | 6.2 | **Refroidissement** | 5d | 2019-06-03 | 2019-06-07 |  |  | 2019-05-20 | 2019-05-24 | 5d |  |
| 80 | 6.2.1 | Architecture à définir | 5d | 2019-06-03 | 2019-06-07 |  |  | 2019-05-20 | 2019-05-24 | 5d | ASE |

Notes:
- 61: Code / Donnée TTC
- 63: Choix aéro
- 64: Autocross puis endura / nce
- 76: Circuit FS ATA
- 77: Simuler le temps à l'accel avec la trainée simulée en configuration lisse
- 80: A définir en fonction du choix aéro

| ID | WBS | Task | Duration | Start | Finish | Predecessors | Complete | Baseline start | Baseline finish | Baseline duration | Resources |
| --- | --- | --- | --- | --- | --- | --- | --- | --- | --- | --- | --- |
| 81 | 6.3 | **Admission** | 10d | 2019-05-27 | 2019-06-07 |  |  | 2019-05-08 | 2019-05-21 | 10d |  |
| 82 | 6.3.1 | Architecture à définir | 10d | 2019-05-27 | 2019-06-07 |  |  | 2019-05-08 | 2019-05-21 | 10d | TLS |
| 83 | 6.4 | **Echappement** | 10d | 2019-05-27 | 2019-06-07 |  |  |  |  |  |  |
| 84 | 6.4.1 | Architecture à définir | 10d | 2019-05-27 | 2019-06-07 |  |  |  |  |  | TLS |
| 85 | 6.5 | **Circuit d'essence** | 20d | 2019-05-06 | 2019-05-31 |  | 47% | 2019-05-06 | 2019-05-24 | 15d |  |
| 86 | 6.5.1 | Reflexion sur l'éthanol | 20d | 2019-05-06 | 2019-05-31 |  | 50% | 2019-05-06 | 2019-05-24 | 15d | CAD |
| 87 | 6.5.2 | Sytème de remplissage plus léger | 18d | 2019-05-08 | 2019-05-31 |  | 45% | 2019-05-08 | 2019-05-21 | 10d | EBA; GLD |
| 88 | 7 | **SEISM** | 114d | 2019-05-22 | 2019-10-28 |  | 33% | 2019-05-10 | 2019-05-16 | 5d |  |
| 89 | 7.1 | **Démarchage** | 23d | 2019-05-22 | 2019-06-21 |  | 58% | 2019-05-10 | 2019-05-16 | 5d |  |
| 90 | 7.1.1 | Caméra de casque | 7d | 2019-05-22 | 2019-05-30 |  | 100% | 2019-05-10 | 2019-05-16 | 5d | CLS |
| 91 | 7.1.2 | Relancer pour la caméra | 5d | 2019-06-17 | 2019-06-21 |  |  |  |  |  |  |
| 92 | 7.2 | **Faisceau** | 28d | 2019-05-22 | 2019-06-28 |  | 21% |  |  |  |  |
| 93 | 7.2.1 | CdCF | 8d | 2019-05-22 | 2019-05-31 |  | 100% |  |  |  |  |
| 94 | 7.2.2 | Architecture Faisceau | 5d | 2019-06-03 | 2019-06-07 | 93 |  |  |  |  | CLS |
| 95 | 7.2.3 | Faisceau HV | 5d | 2019-06-10 | 2019-06-14 | 94 |  |  |  |  | CLS |
| 96 | 7.2.4 | Batterie | 10d | 2019-06-17 | 2019-06-28 | 95 |  |  |  |  | CLS |
| 97 | 7.2.5 | Faisceau LV | 10d | 2019-06-10 | 2019-06-21 | 94 |  |  |  |  | CLS |
| 98 | 7.3 | **Tableau de bord** | 13d | 2019-05-22 | 2019-06-07 |  | 61% |  |  |  |  |
| 99 | 7.3.1 | CdCF | 8d | 2019-05-22 | 2019-05-31 |  | 100% |  |  |  |  |
| 100 | 7.3.2 | Architecture | 5d | 2019-06-03 | 2019-06-07 | 99 |  |  |  |  | RMN |
| 101 | 7.4 | **Passage de rapport** | 33d | 2019-05-22 | 2019-07-05 |  | 37% |  |  |  |  |
| 102 | 7.4.1 | CdCF | 8d | 2019-05-22 | 2019-05-31 |  | 100% |  |  |  |  |
| 103 | 7.4.2 | Contacter TDN | 3d | 2019-06-03 | 2019-06-05 | 102 | 100% |  |  |  |  |
| 104 | 7.4.3 | Architecture | 5d | 2019-06-03 | 2019-06-07 | 102 | 50% |  |  |  | BMA |
| 105 | 7.4.4 | Commande de boîte | 20d | 2019-06-10 | 2019-07-05 | 104 |  |  |  |  | BMA |

Notes:
- 82: faire attention à l'aéro
- 84: faire attention à l'aéro
- 100: TdB/Volant équipé
- 104: TdB/Volant équipé

| ID | WBS | Task | Duration | Start | Finish | Predecessors | Complete | Resources |
| --- | --- | --- | --- | --- | --- | --- | --- | --- |
| 106 | 7.5 | **Télémétrie** | 23d | 2019-05-22 | 2019-06-21 |  | 34% |  |
| 107 | 7.5.1 | CdCF | 8d | 2019-05-22 | 2019-05-31 |  | 100% |  |
| 108 | 7.5.2 | Architecture | 5d | 2019-06-03 | 2019-06-07 | 107 |  | CLS |
| 109 | 7.5.3 | Choix capteurs | 10d | 2019-06-10 | 2019-06-21 | 108 |  | CLS |
| 110 | 7.6 | **Communication pilote-stand** | 20d | 2019-10-01 | 2019-10-28 |  |  |  |
| 111 | 7.6.1 | Architecture | 20d | 2019-10-01 | 2019-10-28 |  |  |  |
